# Salesforce_Phase3

Schedule from MS Project, 2013-05-13 to 2013-06-27.

## Calendars

- Standard: Mon-Fri 08:00-12:00, 13:00-17:00; Sat-Sun off. Exceptions (off unless hours are given): 2013-05-13 08:30-12:00, 13:30-18:00, 2013-05-21 to 2013-05-22 08:30-12:00, 13:30-18:00.

## Resources

| Resource |
| --- |
| 1 |
| All team |
| Phi Ho |
| Si Huynh |
| Ha Nguyen |
| Vinh |
| Phi Ho & Vinh |
| Hiến & Hiếu |
| Ha Nguyen & Long |
| Hien & Hieu |
| Ha & Long |
| Phi & Vinh |
| All team & Chi (content) |
| Long & Chi (content) |

## Schedule

| ID | WBS | Task | Duration | Start | Finish | Predecessors | Total slack | Free slack | Constraint | Resources | Work |
| --- | --- | --- | --- | --- | --- | --- | --- | --- | --- | --- | --- |
| 1 | 1 | **TreMoCoi_Project_Phase1** | 8.5d | 2013-06-03 | 2013-06-13 |  | 0d |  |  |  | 148h |
| 2 | 1.1 | Study about Foundation front-end framework | 1d | 2013-06-03 | 2013-06-03 |  | 0d |  | start no earlier than 2013-06-03 | All team | 8h |
| 3 | 1.2 | Analysis and summary the business | 3d | 2013-06-03 | 2013-06-05 |  | 12d | 0d | start no earlier than 2013-06-03 | Ha Nguyen | 24h |
| 4 | 1.3 | Home: Header, Sidebar, Footer (normal: the last section) | 1.5d | 2013-06-04 | 2013-06-05 | 2 | 13.5d | 0d |  | Phi Ho & Vinh | 12h |
| 5 | 1.4 | Home: Center, Footer (content section) | 1.5d | 2013-06-04 | 2013-06-05 | 2 | 0d |  |  | Hiến & Hiếu | 12h |
| 6 | 1.5 | News: by categories | 1d | 2013-06-05 | 2013-06-06 | 4 | 13.5d | 0d |  | Phi Ho & Vinh | 8h |
| 7 | 1.6 | Login, Registration | 2d | 2013-06-05 | 2013-06-07 | 5 | 0d |  |  | Hien & Hieu | 16h |
| 8 | 1.7 | Adoption form | 2.5d | 2013-06-06 | 2013-06-10 | 3 | 13.5d |  |  | Ha & Long | 20h |
| 9 | 1.8 | Orphans information | 2d | 2013-06-06 | 2013-06-10 | 6 | 13.5d |  |  | Phi Ho & Vinh | 16h |
| 10 | 1.9 | Social Network: Share, Like | 1d | 2013-06-07 | 2013-06-10 | 7 | 0d |  |  | Hien & Hieu | 8h |
| 12 | 1.10 | Test and Fixbug | 3d | 2013-06-10 | 2013-06-13 | 10, 7 | 0d |  |  | All team | 24h |
| 14 | 2 | **TreMoCoi_Project_Phase2** | 5d? | 2013-06-13 | 2013-06-20 |  | 0d |  |  |  | 40h |
| 15 | 2.1 | Merge new design | 2d | 2013-06-13 | 2013-06-17 | 12 | 0d |  |  | All team | 16h |
| 16 | 2.2 | Test and Fixbug | 1d? | 2013-06-17 | 2013-06-18 | 15 | 0d |  |  | All team | 8h |
| 17 | 2.3 | Merge to Production | 2d | 2013-06-18 | 2013-06-20 | 16 | 0d |  |  | All team | 16h |
| 19 | 3 | **TreMoCoi_Project_Phase3** | 5.5d? | 2013-06-20 | 2013-06-27 |  | 0d |  |  |  | 88h |
| 20 | 3.1 | Mobile theme | 2d | 2013-06-20 | 2013-06-24 | 17 | 3d | 0d |  | Hien & Hieu | 16h |
| 21 | 3.2 | Form Tuyen dung | 1.5d | 2013-06-20 | 2013-06-21 | 17 | 0d |  |  | Ha & Long | 12h |
| 22 | 3.3 | Import from excel to table Tre mo coi | 2d | 2013-06-20 | 2013-06-24 | 17 | 3d | 0d |  | Phi & Vinh | 16h |
| 23 | 3.4 | Happy ending | 0.5d | 2013-06-24 | 2013-06-24 | 21 | 3.5d |  |  | Long & Chi (content) | 4h |
| 24 | 3.5 | User's trace | 0.5d | 2013-06-24 | 2013-06-24 | 22 | 3d |  |  | Phi & Vinh | 4h |
| 25 | 3.6 | User's children | 0.5d | 2013-06-24 | 2013-06-24 | 20 | 3d |  |  | Hien & Hieu | 4h |
| 26 | 3.7 | Lien he | 1d? | 2013-06-24 | 2013-06-24 | 21 | 0d |  |  | Ha & Long | 8h |
| 28 | 3.8 | Test and Fixbug | 1d? | 2013-06-25 | 2013-06-25 | 26, 25, 22 | 0d |  |  | All team | 8h |
| 29 | 3.9 | Merge to Production | 2d | 2013-06-26 | 2013-06-27 | 28 | 0d |  |  | All team | 16h |

Notes:
- 1: Text1: Note: Bản layout chưa design
- 4: Text1: 1, 2, 3, 4, 5, 6, 11, 12, 13, 14, 15, 16
- 5: Text1: 7, 8, 9, 14, 15
- 6: Text1: Danh sách trai tre (bai viet lien quan); Bai viet, hinh anh, video, am nhac ve tre mo coi, hoan canh kho khan. Những tấm lòng vàng;4. Đăng thông tin trẻ em bị lạc, Hoặc tìm người thân lên, About (Gioi thieu)
- 7: Text1: Normal, FB, Twitter: Login = lightbox; Registration: Normal
- 8: Text1: Form đăng ký nhận con nuôi; Search and send Email kết quả
- 9: Text1: Form nhập thông tin trẻ mồ côi: Tên bé, ngay sinh, ngay nhan, giới tính, hinh anh bé (User (cá nhân hoặc tổ chức) or Guest form: New table?
- 10: Text1: Chuc nang chia se bai viet len cac trang mang xa hoi : facebook de moi nguoi co the nhanh chong gui cac thong tin tu website cua minh cho ban be ho.
- 14: Text1: Merge new design
- 19: Text1: Add expand functions
- 21: Text1: Form đăng tuyển dụng, send email ứng viên phù hợp toi nguoi dang tin
- 23: Text1: Thông tin 1 gđ nhận con nuôi và họ sống hạnh phúc
- 24: Text1: Show lai thong tin cho user về những nhu cầu họ đã đăng
- 25: Text1: Show thông tin những đứa trẻ mà user đã đăng

| ID | WBS | Task | Duration | Start | Finish | Total slack |
| --- | --- | --- | --- | --- | --- | --- |
| 34 | 4 | **Future functions** | 1d? | 2013-05-13 | 2013-05-13 | 33d |
| 35 | 4.1 | Children's history | 1d? | 2013-05-13 | 2013-05-13 | 33d |
| 36 | 4.2 | Upgrade "Tim nguoi than" | 1d? | 2013-05-13 | 2013-05-13 | 33d |
| 37 | 4.3 | Upgrade "Viec lam cho em" | 1d? | 2013-05-13 | 2013-05-13 | 33d |
| 50 | 4.4 | Note: Resource name by Newbie in WP | 1d? | 2013-05-13 | 2013-05-13 | 33d |

Notes:
- 35: Text1: 1 bảng history lưu thông tin cuộc sống trạng thái của trẻ
- 36: Text1: Phase 1 hien gio de dam bao tien do, tam thoi coi nhu la 1 ban tin, ai muon tim nguoi than thi gui qua Lien-he, admin se make sure nhu cau la co that roi dang len muc Tim nguoi than (dạng News theo category 'tim-nguoi-than')
- 37: Text1: Phase 1 hien gio de dam bao tien do, tam thoi coi nhu la 1 ban tin, ai muon tim ung vien thi gui qua Lien-he, admin se make sure nhu cau la co that roi dang len muc Viec lam cho em (dạng News theo category 'viec-lam-cho-em')
